# TU Cog

Schedule from GanttProject, 2014-01-15 to 2015-08-03, baseline: overlaping regardless of resources.

## Calendars

- Project calendar: Mon-Fri working; Sat-Sun off.

## Schedule

| ID | WBS | Task | Type | Duration | Start | Finish | Predecessors | Baseline start | Baseline finish | Baseline duration |
| --- | --- | --- | --- | --- | --- | --- | --- | --- | --- | --- |
| 1 | 1 | Start project | milestone | 0d | 2014-01-15 | 2014-01-15 |  | 2014-01-15 | 2014-01-15 | 0d |
| 2 | 2 | **Preliminary development** |  | 42d | 2014-01-15 | 2014-03-13 | 1 | 2014-01-15 | 2014-03-13 | 42d |
| 3 | 2.1 | Version 1.0 bugs |  | 15d | 2014-01-15 | 2014-02-04 |  | 2014-01-15 | 2014-02-04 | 15d |
| 4 | 2.2 | Version 1.0 improvements |  | 14d | 2014-02-05 | 2014-02-24 | 3 | 2014-02-05 | 2014-02-24 | 14d |
| 5 | 2.3 | Version 1.0 Fixes | milestone | 0d | 2014-02-25 | 2014-02-25 | 3, 4 | 2014-02-25 | 2014-02-25 | 0d |
| 6 | 2.4 | Test and debug |  | 0d | 2014-02-25 | 2014-02-25 | 5 | 2014-02-25 | 2014-02-25 | 0d |
| 7 | 2.5 | Refactor to get rid of KBAdapter addressing |  | 2d | 2014-02-25 | 2014-02-26 | 5 | 2014-02-25 | 2014-02-26 | 2d |
| 8 | 2.6 | Merge training and request mode |  | 10d | 2014-02-25 | 2014-03-10 | 5 | 2014-02-25 | 2014-03-10 | 10d |
| 9 | 2.7 | Test and debug |  | 3d | 2014-03-11 | 2014-03-13 | 8 | 2014-03-11 | 2014-03-13 | 3d |
| 10 | 2.8 | HowTo training |  | 2d | 2014-02-25 | 2014-02-26 | 5 | 2014-02-25 | 2014-02-26 | 2d |
| 11 | 2.9 | Test and debug |  | 3d | 2014-02-27 | 2014-03-03 | 10 | 2014-02-27 | 2014-03-03 | 3d |
| 12 | 3 | **Thinking model** |  | 59d | 2014-03-14 | 2014-06-04 | 2 | 2014-03-14 | 2014-06-04 | 59d |
| 13 | 3.1 | 6 thinking levels design |  | 5d | 2014-03-14 | 2014-03-20 |  | 2014-03-14 | 2014-03-20 | 5d |
| 14 | 3.2 | 6 thinking levels implementation |  | 10d | 2014-03-21 | 2014-04-03 | 13 | 2014-03-21 | 2014-04-03 | 10d |
| 15 | 3.3 | Test and debug |  | 10d | 2014-04-04 | 2014-04-17 | 14 | 2014-04-04 | 2014-04-17 | 10d |
| 16 | 3.4 | Integration |  | 10d | 2014-04-18 | 2014-05-01 | 15 | 2014-04-18 | 2014-05-01 | 10d |
| 17 | 3.5 | Time concept |  | 3d | 2014-05-02 | 2014-05-06 | 16 | 2014-05-02 | 2014-05-06 | 3d |
| 18 | 3.6 | Personality manager |  | 10d | 2014-04-18 | 2014-05-01 | 15 | 2014-04-18 | 2014-05-01 | 10d |
| 19 | 3.7 | Test and debug |  | 10d | 2014-05-02 | 2014-05-15 | 18 | 2014-05-02 | 2014-05-15 | 10d |
| 20 | 3.8 | Instinctive level |  | 3d | 2014-05-07 | 2014-05-09 | 17 | 2014-05-07 | 2014-05-09 | 3d |
| 21 | 3.9 | Test and debug |  | 1d | 2014-05-12 | 2014-05-12 | 20 | 2014-05-12 | 2014-05-12 | 1d |
| 22 | 3.10 | Integration |  | 7d | 2014-05-13 | 2014-05-21 | 21 | 2014-05-13 | 2014-05-21 | 7d |
| 23 | 3.11 | Test and debug |  | 10d | 2014-05-22 | 2014-06-04 | 22 | 2014-05-22 | 2014-06-04 | 10d |
| 24 | 3.12 | Thinking model end | milestone | 0d | 2014-06-05 | 2014-06-05 | 23 | 2014-06-05 | 2014-06-05 | 0d |

| ID | WBS | Task | Type | Duration | Start | Finish | Predecessors | Baseline start | Baseline finish | Baseline duration |
| --- | --- | --- | --- | --- | --- | --- | --- | --- | --- | --- |
| 25 | 4 | **Analyser** |  | 52d | 2014-06-05 | 2014-08-15 | 12 | 2014-06-05 | 2014-08-15 | 52d |
| 26 | 4.1 | JNI PLN |  | 15d | 2014-06-05 | 2014-06-25 |  | 2014-06-05 | 2014-06-25 | 15d |
| 27 | 4.2 | Test and debug |  | 15d | 2014-06-26 | 2014-07-16 | 26 | 2014-06-26 | 2014-07-16 | 15d |
| 28 | 4.3 | Inductive reasoning |  | 7d | 2014-07-17 | 2014-07-25 | 27 | 2014-07-17 | 2014-07-25 | 7d |
| 29 | 4.4 | Test and debug |  | 3d | 2014-07-28 | 2014-07-30 | 28 | 2014-07-28 | 2014-07-30 | 3d |
| 30 | 4.5 | Deductive reasoning |  | 6d | 2014-07-17 | 2014-07-24 | 27 | 2014-07-17 | 2014-07-24 | 6d |
| 31 | 4.6 | Test and bebug |  | 3d | 2014-07-25 | 2014-07-29 | 30 | 2014-07-25 | 2014-07-29 | 3d |
| 32 | 4.7 | Abductive reasoning |  | 8d | 2014-07-17 | 2014-07-28 | 27 | 2014-07-17 | 2014-07-28 | 8d |
| 33 | 4.8 | Test and debug |  | 4d | 2014-07-29 | 2014-08-01 | 32 | 2014-07-29 | 2014-08-01 | 4d |
| 34 | 4.9 | Integration |  | 7d | 2014-08-04 | 2014-08-12 | 29, 31, 33 | 2014-08-04 | 2014-08-12 | 7d |
| 35 | 4.10 | Testing |  | 3d | 2014-08-13 | 2014-08-15 | 34 | 2014-08-13 | 2014-08-15 | 3d |
| 36 | 4.11 | Analyser end | milestone | 0d | 2014-08-18 | 2014-08-18 | 35 | 2014-08-18 | 2014-08-18 | 0d |
| 37 | 5 | **Actuator** |  | 45d | 2014-08-18 | 2014-10-17 | 25 | 2014-08-18 | 2014-11-19 | 68d |
| 38 | 5.1 | Smart actuator |  | 10d | 2014-08-18 | 2014-08-29 | 9 | 2014-08-18 | 2014-08-18 | 1d |
| 39 | 5.2 | Test and debug |  | 10d | 2014-09-01 | 2014-09-12 | 38 | 2014-08-19 | 2014-09-01 | 10d |
| 40 | 5.3 | Smart feedback analyser |  | 15d | 2014-09-15 | 2014-10-03 | 39 | 2014-09-02 | 2014-09-22 | 15d |
| 41 | 5.4 | Test and debug |  | 7d | 2014-10-06 | 2014-10-14 | 40 | 2014-09-23 | 2014-10-01 | 7d |
| 42 | 5.5 | Smart reporter |  | 10d | 2014-09-01 | 2014-09-12 | 38 | 2014-10-02 | 2014-10-15 | 10d |
| 43 | 5.6 | Test and debug |  | 10d | 2014-09-15 | 2014-09-26 | 42 | 2014-10-16 | 2014-10-29 | 10d |
| 44 | 5.7 | Testing |  | 15d | 2014-09-29 | 2014-10-17 | 43 | 2014-10-30 | 2014-11-19 | 15d |
| 45 | 5.8 | Smart actuator end | milestone | 0d | 2014-10-20 | 2014-10-20 | 44 | 2014-11-20 | 2014-11-20 | 0d |
| 46 | 6 | **Emotional thinking** |  | 110d | 2014-10-20 | 2015-03-20 | 37 | 2014-11-20 | 2015-04-22 | 110d |
| 47 | 6.1 | Apprisal theory analysis |  | 10d | 2014-10-20 | 2014-10-31 |  | 2014-11-20 | 2014-12-03 | 10d |
| 48 | 6.2 | Design |  | 20d | 2014-11-03 | 2014-11-28 | 47 | 2014-12-04 | 2014-12-31 | 20d |
| 49 | 6.3 | Implementation and testing |  | 80d | 2014-12-01 | 2015-03-20 | 48 | 2015-01-01 | 2015-04-22 | 80d |

| ID | WBS | Task | Type | Duration | Start | Finish | Predecessors | Baseline start | Baseline finish | Baseline duration |
| --- | --- | --- | --- | --- | --- | --- | --- | --- | --- | --- |
| 50 | 7 | **Common sense reasoning** |  | 75d | 2015-03-23 | 2015-07-03 | 46 | 2015-04-23 | 2015-08-05 | 75d |
| 51 | 7.1 | Design |  | 15d | 2015-03-23 | 2015-04-10 |  | 2015-04-23 | 2015-05-13 | 15d |
| 52 | 7.2 | Implementation and testing |  | 60d | 2015-04-13 | 2015-07-03 | 51 | 2015-05-14 | 2015-08-05 | 60d |
| 53 | 8 | Knowledge base creation and training |  | 20d | 2015-07-06 | 2015-07-31 | 50 | 2015-08-06 | 2015-09-02 | 20d |
| 54 | 9 | TU Cog project end | milestone | 0d | 2015-08-03 | 2015-08-03 | 53 | 2015-09-03 | 2015-09-03 | 0d |
